# Proyecto,N,T

Schedule from MS Project, 2019-02-04 to 2020-07-03, 6 hours a day, costs in $, A marks actual dates.

## Calendars

- Estándar: Mon-Fri 06:00-10:00, 10:01-12:00; Sat-Sun off.

## Resources

| Resource | Rate | Cost per use |
| --- | --- | --- |
| brandon garzon | 7500 | 1250000 |
| daniel martinez | 7500 | 1250000 |
| cristian barrios | 7500 | 1250000 |
| jhon gonzalez | 7500 | 1250000 |
| usb | 100 |  |
| internet | 410 | 90000 |
| electricidad | 435 | 130000 |
| computador 1 | 500 | 120000 |
| computador2 | 500 | 120000 |
| computador 3 | 500 | 120000 |
| computador4 | 500 | 120000 |
| sofware | 720 |  |
| Board Gigabyte H170 Gaming 3 Intel 1151 I5 I7 Ssd M.2 Nvidia |  |  |
| Memoria Ram Ddr3 Hyperx Fury 4gb A 1600mhz |  |  |
| Procesador Intel Core I5 8400 2,8 A 4,0 Ghz |  |  |
| Tarjeta Grafica Msi Geforce Gt 710 2 Gb Ddr3 Pci Express 8x |  |  |
| Disco Duro Interno 2tb Sata Toshiba Original P300 |  |  |
| Fuente de poder 600W |  |  |
| Costos relacionados a la calidad |  | 2700000 |
| Hosting | 1000 | 120000 |

## Schedule

| ID | WBS | Task | Duration | Start | Finish | Predecessors | Complete | Constraint | Resources | Work | Actual work | Cost | Actual cost |
| --- | --- | --- | --- | --- | --- | --- | --- | --- | --- | --- | --- | --- | --- |
| 1 | 1 | **Proyecto** | 368.47d? | 2019-02-04 A | 2020-07-03 A |  | 100% |  |  | 5510.27h | 5510.27h | 72,941,490 | 72,941,490 |
| 2 | 1.1 | **Analisis** | 54.35d | 2019-02-04 A | 2019-04-19 A |  | 100% |  | brandon garzon; computador 1; computador2; electricidad; internet; jhon gonzalez; sofware; usb | 652.17h | 652.17h | 7,853,915 | 7,853,915 |
| 3 | 1.1.1 | presentacion del proyecto | 4.49d | 2019-02-04 A | 2019-02-08 A |  | 100% | finish no earlier than 2019-02-08 |  |  |  |  |  |
| 4 | 1.1.2 | Levantamiento de Información | 10.83d | 2019-02-11 A | 2019-02-26 A | 3 | 100% | start no earlier than 2019-02-11 |  |  |  |  |  |
| 5 | 1.1.3 | Diagrama BPMN | 9.47d | 2019-02-25 A | 2019-03-08 A | 4 | 100% | start no earlier than 2019-02-25 |  |  |  |  |  |
| 6 | 1.1.4 | Historias de usuario | 4.49d | 2019-03-11 A | 2019-03-15 A | 5 | 100% | finish no earlier than 2019-03-15 |  |  |  |  |  |
| 7 | 1.1.5 | Diagrama de casos de uso | 9.47d | 2019-03-18 A | 2019-03-29 A | 6 | 100% | finish no earlier than 2019-03-29 |  |  |  |  |  |
| 8 | 1.1.6 | Diagrama casos de uso extendidos | 9.47d | 2019-04-01 A | 2019-04-12 A | 7 | 100% | start no earlier than 2019-04-01 |  |  |  |  |  |
| 9 | 1.1.7 | Elavoracion de control de verciones | 4.49d | 2019-04-15 A | 2019-04-19 A | 8 | 100% | finish no earlier than 2019-04-19 |  |  |  |  |  |
| 10 | 1.2 | **Diseño** | 53.35d | 2019-04-23 A | 2019-07-05 A | 2 | 100% |  | computador 1; computador 3; computador2; computador4; cristian barrios; daniel martinez; electricidad; internet; sofware; usb | 640.2h | 640.2h | 8,005,165 | 8,005,165 |
| 11 | 1.2.1 | Modelo entidad relación | 3.49d | 2019-04-23 A | 2019-04-26 A |  | 100% | finish no earlier than 2019-04-26 |  |  |  |  |  |
| 12 | 1.2.2 | Diccionario de datos | 4.49d | 2019-04-29 A | 2019-05-03 A | 11 | 100% | finish no earlier than 2019-05-03 |  |  |  |  |  |
| 13 | 1.2.3 | Cronograma de presupuesto | 2.67d | 2019-05-06 A | 2019-05-09 A | 12 | 100% | start no earlier than 2019-05-06 |  |  |  |  |  |
| 14 | 1.2.4 | Diagrama de distribucion | 9.47d | 2019-05-13 A | 2019-05-24 A | 13 | 100% | start no earlier than 2019-05-13 |  |  |  |  |  |
| 15 | 1.2.5 | Diagrama de clases | 9.47d | 2019-05-27 A | 2019-06-07 A | 14 | 100% | start no earlier than 2019-05-27 |  |  |  |  |  |
| 16 | 1.2.6 | Formato de casos | 4.49d | 2019-06-10 A | 2019-06-14 A | 15 | 100% | finish no earlier than 2019-06-14 |  |  |  |  |  |
| 17 | 1.2.7 | Prototipo de interfas"mockups" | 9.47d | 2019-06-17 A | 2019-06-28 A | 16 | 100% | finish no earlier than 2019-06-28 |  |  |  |  |  |
| 18 | 1.2.8 | Normalizacion de el diagrama entidad relación | 4.49d | 2019-07-01 A | 2019-07-05 A | 17 | 100% | finish no earlier than 2019-07-05 |  |  |  |  |  |
| 19 | 1.3 | Periodo no laborable | 9.97d? | 2019-07-08 A | 2019-07-19 A | 10 | 100% | start no earlier than 2019-07-08 | brandon garzon; cristian barrios; daniel martinez; jhon gonzalez | 239.33h | 239.33h | 6,795,000 | 6,795,000 |
| 20 | 1.4 | **Desarrollo** | 54.35d | 2019-07-22 A | 2019-10-04 A | 19 | 100% |  | brandon garzon; computador 1; computador 3; computador2; computador4; cristian barrios; daniel martinez; electricidad; internet; jhon gonzalez; sofware; usb | 1304.33h | 1304.33h | 15,486,165 | 15,486,165 |
| 21 | 1.4.1 | Inventario del sistema de información | 14.46d | 2019-07-22 A | 2019-08-09 A |  | 100% | finish no earlier than 2019-08-09 |  |  |  |  |  |
| 22 | 1.4.2 | Sistema de integracion continua | 14.46d | 2019-08-12 A | 2019-08-30 A | 21 | 100% | start no earlier than 2019-08-12 |  |  |  |  |  |
| 23 | 1.4.3 | Construccion de bases de datos | 9.47d | 2019-09-02 A | 2019-09-13 A | 22 | 100% | start no earlier than 2019-09-02 |  |  |  |  |  |
| 24 | 1.4.4 | Implementacion de sentencia dml | 9.47d | 2019-09-16 A | 2019-09-27 A | 23 | 100% | start no earlier than 2019-09-16 |  |  |  |  |  |
| 25 | 1.4.5 | Prototipo funcional usando css | 0.8d | 2019-09-30 A | 2019-09-30 A | 24 | 100% | finish no earlier than 2019-09-30 |  |  |  |  |  |
| 26 | 1.4.6 | Iinformes de costos | 3.49d | 2019-10-01 A | 2019-10-04 A | 25 | 100% | finish no earlier than 2019-10-04 |  |  |  |  |  |

| ID | WBS | Task | Duration | Start | Finish | Predecessors | Complete | Constraint | Resources | Work | Actual work | Cost | Actual cost |
| --- | --- | --- | --- | --- | --- | --- | --- | --- | --- | --- | --- | --- | --- |
| 27 | 1.5 | **Implementacion** | 52.35d | 2019-10-07 A | 2019-12-18 A | 20 | 100% |  | computador 1; computador 3; computador2; computador4; cristian barrios; daniel martinez; electricidad; internet; sofware; usb | 628.23h | 628.23h | 7,915,415 | 7,915,415 |
| 28 | 1.5.1 | Manual tecnico | 7.48d | 2019-10-07 A | 2019-10-16 A |  | 100% | finish no earlier than 2019-10-16 |  |  |  |  |  |
| 29 | 1.5.2 | Evidencias de tecnicas de acople | 4.49d | 2019-10-17 A | 2019-10-23 A | 28 | 100% | finish no earlier than 2019-10-23 |  |  |  |  |  |
| 30 | 1.5.3 | instalacion del aplicativo | 12d | 2019-10-24 A | 2019-11-11 A | 29 | 100% |  |  |  |  |  |  |
| 31 | 1.5.4 | Implementacion de diagrama de distribucion | 12d | 2019-11-11 A | 2019-11-27 A | 30 | 100% |  |  |  |  |  |  |
| 32 | 1.5.5 | Informe de migracion de datos | 4.49d | 2019-12-02 A | 2019-12-06 A | 31 | 100% | finish no earlier than 2019-12-06 |  |  |  |  |  |
| 33 | 1.5.6 | evidencias de instalacon plan de respaldo y migracion | 7.48d | 2019-12-09 A | 2019-12-18 A | 32 | 100% | finish no earlier than 2019-12-18 |  |  |  |  |  |
| 34 | 1.6 | Periodo no laborable | 32.91d? | 2019-12-19 A | 2020-02-03 A | 27 | 100% | finish no earlier than 2020-02-03 | brandon garzon; cristian barrios; daniel martinez; jhon gonzalez | 789.8h | 789.8h | 10,923,500 | 10,923,500 |
| 35 | 1.7 | **Pruebas** | 53.35d | 2020-02-04 A | 2020-04-17 A | 34 | 100% |  | brandon garzon; computador 1; computador2; electricidad; internet; jhon gonzalez; sofware; usb | 960.2h | 960.2h | 13,006,330 | 13,006,330 |
| 36 | 1.7.1 | Cuadro comparativo de provedores | 26.67d | 2020-02-04 A | 2020-03-12 A |  | 100% | start no earlier than 2020-02-04 |  |  |  |  |  |
| 37 | 1.7.2 | Contratos de sofware | 26.67d | 2020-03-12 A | 2020-04-17 A | 36 | 100% | finish no earlier than 2020-04-01 | computador 1; cristian barrios; daniel martinez; electricidad; internet; sofware; usb | 320h | 320h | 5,242,165 | 5,242,165 |
| 38 | 1.7.3 | Documentacion de pruebas | 0.02d | 2020-04-17 A | 2020-04-17 A | 37 | 100% | finish no earlier than 2020-04-17 |  |  |  |  |  |
| 39 | 1.8 | **Calidad** | 54.85d | 2020-04-20 A | 2020-07-03 A | 35 | 100% |  |  | 296h | 296h | 2,956,000 | 2,956,000 |
| 40 | 1.8.1 | Evidencia modelo de calidad | 26.67d | 2020-04-20 A | 2020-05-27 A |  | 100% | start no earlier than 2020-04-20 | Costos relacionados a la calidad | 160h | 160h | 2,700,000 | 2,700,000 |
| 41 | 1.8.2 | Evidencias del proyecto terminado | 22.67d | 2020-04-20 A | 2020-05-20 A | 29 | 100% |  | Hosting | 136h | 136h | 256,000 | 256,000 |
| 42 | 1.8.3 | Evidencias de manuial de usuario y de operación | 25.33d | 2020-05-29 A | 2020-07-03 A | 41 | 100% | finish no earlier than 2020-07-03 |  |  |  |  |  |
